# Turnaround Kinder Ovo - modelo condicional

Schedule from MS Project XML.

## Resources

| Resource |
| --- |
| Operação |
| Mecânica |
| Inspeção |
| Guindaste |
| Elétrica |

## Schedule

| ID | WBS | Task | Duration | Predecessors | Resources |
| --- | --- | --- | --- | --- | --- |
| 1 | 1 | Parada operacional | 0.12d |  | Operação |
| 2 | 2 | LOTO e liberação | 0.25d | 1 | Operação |
| 3 | 3 | Abrir bomba P-101 | 0.25d | 2 | Mecânica [300%] |
| 4 | 4 | Inspecionar P-101 | 0.25d | 3 | Inspeção [200%] |
| 5 | 5 | Trocar rolamentos P-101 | 0.62d | 4 | Mecânica [300%] |
| 6 | 6 | Trocar selo mecânico P-101 | 0.38d | 4 | Mecânica [200%] |
| 7 | 7 | Reparar eixo P-101 | 0.88d | 4 | Mecânica [300%] |
| 8 | 8 | END pós-reparo do eixo | 0.25d | 7 | Inspeção [200%] |
| 9 | 9 | Recuperar impelidor | 0.62d | 4 | Mecânica [400%] |
| 10 | 10 | Substituir impelidor | 0.5d | 4 | Mecânica [400%]; Guindaste |
| 13 | 4.1 | Ensaiar motor elétrico P-101 | 0.25d | 2 | Elétrica [200%] |
| 14 | 4.2 | Substituir motor P-101 | 0.75d | 13 | Elétrica [200%]; Mecânica [200%]; Guindaste |
| 11 | 11 | Fechar e alinhar P-101 | 0.38d | 4, 5, 6, 8, 9, 10, 13, 14 | Mecânica [400%] |
| 12 | 12 | Teste funcional e partida | 0.25d | 11 | Operação |
