# Modelo de Turnaround

Schedule from MS Project XML, 2026-10-05 to 2026-10-06, 12 hours a day.
Cronograma modelo para importação no motor de turnaround

## Calendars

- Turnaround 24x7: Mon-Sun 00:00-23:59.

## Resources

| Resource |
| --- |
| Unassigned |
| Operação |
| Mecânica |
| Elétrica |
| Instrumentação |
| Inspeção |
| Guindaste 25t |
| Andaime |

## Schedule

| ID | WBS | Task | Type | Duration | Start | Finish | Predecessors | Resources | Work |
| --- | --- | --- | --- | --- | --- | --- | --- | --- | --- |
| 1 | 1 | **Preparação e liberação** |  | 0.33d | 2026-10-05 07:00 | 2026-10-05 11:00 |  |  |  |
| 2 | 1.1 | Parada operacional |  | 0.08d | 2026-10-05 07:00 | 2026-10-05 08:00 |  | Operação | 1h |
| 3 | 1.2 | LOTO e liberação de energia |  | 0.17d | 2026-10-05 08:00 | 2026-10-05 10:00 | 2 | Operação; Elétrica | 4h |
| 4 | 1.3 | Montar andaime de acesso |  | 0.21d | 2026-10-05 08:30 | 2026-10-05 11:00 | 2SS+0.04d | Andaime [200%] | 5h |
| 5 | 2 | **Frente A - Bomba P-101** |  | 1.08d | 2026-10-05 10:00 | 2026-10-05 23:00 |  |  |  |
| 6 | 2.1 | Desacoplar bomba P-101 |  | 0.25d | 2026-10-05 10:00 | 2026-10-05 13:00 | 3 | Mecânica [400%] | 12h |
| 7 | 2.2 | Remover conjunto rotativo P-101 |  | 0.17d | 2026-10-05 13:00 | 2026-10-05 15:00 | 6 | Mecânica [400%]; Guindaste 25t | 8h |
| 8 | 2.3 | Inspecionar conjunto P-101 |  | 0.17d | 2026-10-05 15:00 | 2026-10-05 17:00 | 7 | Inspeção [200%] | 4h |
| 9 | 2.4 | Revisar rolamentos e selo P-101 |  | 0.33d | 2026-10-05 17:00 | 2026-10-05 21:00 | 8 | Mecânica [400%] | 16h |
| 10 | 2.5 | Montar e alinhar P-101 |  | 0.17d | 2026-10-05 21:00 | 2026-10-05 23:00 | 9 | Mecânica [400%]; Instrumentação | 8h |
| 11 | 3 | **Frente B - Válvula XV-204** |  | 0.83d | 2026-10-05 10:00 | 2026-10-05 20:00 |  |  |  |
| 12 | 3.1 | Remover válvula XV-204 |  | 0.25d | 2026-10-05 10:00 | 2026-10-05 13:00 | 3 | Mecânica [400%]; Guindaste 25t | 12h |
| 13 | 3.2 | Inspecionar sede e obturador XV-204 |  | 0.17d | 2026-10-05 13:00 | 2026-10-05 15:00 | 12 | Inspeção [200%] | 4h |
| 14 | 3.3 | Lapidar sede XV-204 |  | 0.25d | 2026-10-05 15:00 | 2026-10-05 18:00 | 13 | Mecânica [400%] | 12h |
| 15 | 3.4 | Montar válvula XV-204 |  | 0.17d | 2026-10-05 18:00 | 2026-10-05 20:00 | 14 | Mecânica [400%] | 8h |
| 16 | 4 | **Testes e partida** |  | 0.33d | 2026-10-05 23:00 | 2026-10-06 03:00 |  |  |  |
| 17 | 4.1 | Teste funcional e instrumentação |  | 0.17d | 2026-10-05 23:00 | 2026-10-06 01:00 | 10, 15 | Instrumentação [200%]; Elétrica | 6h |
| 18 | 4.2 | Retirada de LOTO e partida |  | 0.17d | 2026-10-06 01:00 | 2026-10-06 03:00 | 17 | Operação; Elétrica | 4h |
| 19 | 5 | Fim da parada | milestone | 0d | 2026-10-06 03:00 | 2026-10-06 03:00 | 18 |  |  |
